# 星火G3.5 1A

Schedule from a web Gantt chart, 2025-08-08 to 2025-08-11.
Every day is a working day

## Schedule

| ID | WBS | Task | Duration | Start | Finish |
| --- | --- | --- | --- | --- | --- |
| 2 | 1 | Layout ready | 1d | 2025-08-08 | 2025-08-08 |
| 3 | 2 | Mask in | 4d | 2025-08-08 | 2025-08-11 |
